# GR1_IDENTIFICATION_OF_DRUG_COMBINATION_USING_BOOLEAN_NETWORKS

Schedule from MS Project, 2017-07-03 to 2018-05-15, A marks actual dates.

## Calendars

- Standard: Mon-Fri 08:00-12:00, 13:00-17:00; Sat-Sun off.

## Resources

| Resource | Rate |
| --- | --- |
| Unassigned | 10 |

## Schedule

| ID | WBS | Task | Type | Duration | Start | Finish | Predecessors | Complete | Remaining | Total slack |
| --- | --- | --- | --- | --- | --- | --- | --- | --- | --- | --- |
| 1 | 1 | **CSE Academic Project** |  | 226.56d | 2017-07-03 A | 2018-05-15 |  | 99% | 0d | 0d |
| 2 | 1.1 | **Phase 1: 7th Semester Activities** |  | 107d | 2017-07-03 A | 2017-11-28 A |  | 100% |  |  |
| 3 | 1.1.1 | **Project Startup** |  | 45d | 2017-07-03 A | 2017-09-01 A |  | 100% |  |  |
| 4 | 1.1.1.1 | Team Building |  | 10d | 2017-07-03 A | 2017-07-14 A |  | 100% |  |  |
| 5 | 1.1.1.2 | Brainstorm on Project Topic |  | 5d | 2017-07-17 A | 2017-07-21 A | 4 | 100% |  |  |
| 6 | 1.1.1.3 | Project agreed with Guide | milestone | 0d | 2017-07-21 A | 2017-07-21 A | 5 | 100% |  |  |
| 7 | 1.1.1.4 | Related Study & Documentation |  | 30d | 2017-07-17 A | 2017-08-25 A | 4 | 100% |  |  |
| 8 | 1.1.1.5 | Deliver Project Synopsis for Guide's review | milestone | 0d | 2017-08-25 A | 2017-08-25 A | 7 | 100% |  |  |
| 9 | 1.1.1.6 | Close review feedbacks |  | 5d | 2017-08-28 A | 2017-09-01 A | 8 | 100% |  |  |
| 10 | 1.1.1.7 | Project Synopsis Finalized | milestone | 0d | 2017-09-01 A | 2017-09-01 A | 9 | 100% |  |  |
| 11 | 1.1.2 | **Requirement Analysis** |  | 37d | 2017-09-04 A | 2017-10-24 A | 3 | 100% |  |  |
| 12 | 1.1.2.1 | Gather Requirements |  | 10d | 2017-09-04 A | 2017-09-15 A |  | 100% |  |  |
| 13 | 1.1.2.2 | Prepare Draft Requirement Matrix |  | 2d | 2017-09-18 A | 2017-09-19 A | 12 | 100% |  |  |
| 14 | 1.1.2.3 | **Elaborate Requirement and Documentation** |  | 15d | 2017-09-20 A | 2017-10-10 A | 13 | 100% |  |  |
| 15 | 1.1.2.3.1 | Modelling Boolean Network |  | 10d | 2017-09-20 A | 2017-10-03 A |  | 100% |  |  |
| 16 | 1.1.2.3.2 | Unique Input Vector Generation |  | 1d | 2017-09-20 A | 2017-09-20 A |  | 100% |  |  |
| 17 | 1.1.2.3.3 | Fault Introduction into Boolean Network |  | 5d | 2017-09-20 A | 2017-09-26 A |  | 100% |  |  |
| 18 | 1.1.2.3.4 | Drug Application onto Faulty Network |  | 15d | 2017-09-20 A | 2017-10-10 A |  | 100% |  |  |
| 19 | 1.1.2.3.5 | Search for More Efficient Drug Points |  | 10d | 2017-09-20 A | 2017-10-03 A |  | 100% |  |  |
| 20 | 1.1.2.4 | Update Requirement Matrix |  | 10d | 2017-10-11 A | 2017-10-24 A | 14 | 100% |  |  |
| 21 | 1.1.2.5 | Requirement Matrix Finalised | milestone | 0d | 2017-10-24 A | 2017-10-24 A | 20 | 100% |  |  |
| 22 | 1.1.3 | **Design** |  | 97d | 2017-07-03 A | 2017-11-14 A |  | 100% |  |  |
| 23 | 1.1.3.1 | **Detailed Design** |  | 36d | 2017-09-21 A | 2017-11-09 A |  | 100% |  |  |
| 24 | 1.1.3.1.1 | **Boolean Network Modelling** |  | 3d | 2017-10-04 A | 2017-10-06 A | 15 | 100% |  |  |
| 25 | 1.1.3.1.1.1 | Model Boolean Network |  | 3d | 2017-10-04 A | 2017-10-06 A |  | 100% |  |  |
| 26 | 1.1.3.1.2 | Unique Input Vector Generation |  | 5d | 2017-09-21 A | 2017-09-27 A | 16 | 100% |  |  |

| ID | WBS | Task | Duration | Start | Finish | Predecessors | Complete |
| --- | --- | --- | --- | --- | --- | --- | --- |
| 27 | 1.1.3.1.3 | **Fault Introduction into Boolean Network** | 13d | 2017-09-27 A | 2017-10-13 A | 17 | 100% |
| 28 | 1.1.3.1.3.1 | One-fault Scenario | 6d | 2017-09-27 A | 2017-10-04 A |  | 100% |
| 29 | 1.1.3.1.3.2 | Multiple-fault Scenario | 7d | 2017-10-05 A | 2017-10-13 A | 28 | 100% |
| 30 | 1.1.3.1.4 | **Drug Combination Application on Faulty Network** | 22d | 2017-10-11 A | 2017-11-09 A | 18 | 100% |
| 31 | 1.1.3.1.4.1 | Testing Single-fault Scenario | 5d | 2017-10-11 A | 2017-10-17 A |  | 100% |
| 32 | 1.1.3.1.4.2 | Testing Multiple-fault Scenario | 8d | 2017-10-18 A | 2017-10-27 A | 31 | 100% |
| 33 | 1.1.3.1.4.3 | Visualisation of Effect of Drug Combinations | 9d | 2017-10-30 A | 2017-11-09 A | 32 | 100% |
| 34 | 1.1.3.1.5 | **Search for More Efficient Drug Points** | 11d | 2017-10-03 A | 2017-10-18 A | 19 | 100% |
| 35 | 1.1.3.1.5.1 | Simulating Binodal Drugs on Single Faults | 5d | 2017-10-03 A | 2017-10-10 A |  | 100% |
| 36 | 1.1.3.1.5.2 | Visualisation and Identification of More Efficient Drugs | 5d | 2017-10-11 A | 2017-10-18 A | 35 | 100% |
| 37 | 1.1.3.2 | **Test Plan Preparation** | 97d | 2017-07-03 A | 2017-11-14 A |  | 100% |
| 38 | 1.1.3.2.1 | **Boolean Network Modelling** | 72d | 2017-07-03 A | 2017-10-10 A |  | 100% |
| 39 | 1.1.3.2.1.1 | CSV File creation consisting of Protein names | 1d | 2017-07-03 A | 2017-07-03 A |  | 100% |
| 40 | 1.1.3.2.1.2 | Model Boolean Network | 2d | 2017-10-09 A | 2017-10-10 A | 25 | 100% |
| 41 | 1.1.3.2.2 | Unique Input Vector Generation | 2d | 2017-09-28 A | 2017-09-29 A | 26 | 100% |
| 42 | 1.1.3.2.3 | **Fault Introduction into Boolean Network** | 10d | 2017-10-05 A | 2017-10-18 A |  | 100% |
| 43 | 1.1.3.2.3.1 | One-fault Scenario | 3d | 2017-10-05 A | 2017-10-09 A | 28 | 100% |
| 44 | 1.1.3.2.3.2 | Multiple-fault Scenario | 3d | 2017-10-16 A | 2017-10-18 A | 29 | 100% |
| 45 | 1.1.3.2.4 | **Drug Combination Application on Faulty Network** | 20d | 2017-10-18 A | 2017-11-14 A |  | 100% |
| 46 | 1.1.3.2.4.1 | One-fault Scenario | 3d | 2017-10-18 A | 2017-10-20 A | 31 | 100% |
| 47 | 1.1.3.2.4.2 | Multiple-fault Scenario | 3d | 2017-10-30 A | 2017-11-01 A | 32 | 100% |
| 48 | 1.1.3.2.4.3 | Visualisation of Effect of Drug Combinations | 3d | 2017-11-10 A | 2017-11-14 A | 33 | 100% |
| 49 | 1.1.3.2.5 | **Search for More Efficient Drug Points** | 8d | 2017-10-11 A | 2017-10-23 A |  | 100% |
| 50 | 1.1.3.2.5.1 | Simulating Binodal Drugs on Single Faults | 2d | 2017-10-11 A | 2017-10-13 A | 35 | 100% |
| 51 | 1.1.3.2.5.2 | Visualisation and Identification of More Efficient Drugs | 2d | 2017-10-19 A | 2017-10-23 A | 36 | 100% |

| ID | WBS | Task | Type | Duration | Start | Finish | Predecessors | Complete | Remaining | Total slack |
| --- | --- | --- | --- | --- | --- | --- | --- | --- | --- | --- |
| 52 | 1.1.4 | **Phase 1 Closure** |  | 10d | 2017-11-15 A | 2017-11-28 A | 22 | 100% |  |  |
| 53 | 1.1.4.1 | Prepare 7th Semester Project Report |  | 8d | 2017-11-15 A | 2017-11-24 A |  | 100% |  |  |
| 54 | 1.1.4.2 | Update Requirement Matrix |  | 1d | 2017-11-27 A | 2017-11-27 A | 53 | 100% |  |  |
| 55 | 1.1.4.3 | Update Project Plan |  | 1d | 2017-11-28 A | 2017-11-28 A | 54 | 100% |  |  |
| 56 | 1.1.4.4 | Project Viva | milestone | 0d | 2017-11-28 A | 2017-11-28 A | 55 | 100% |  |  |
| 57 | 1.1.4.5 | Approved Project Report - 7th Semester | milestone | 0d | 2017-11-28 A | 2017-11-28 A | 56 | 100% |  |  |
| 58 | 1.2 | Semester Gap |  | 30d | 2017-11-29 A | 2018-01-09 A | 2 | 100% |  |  |
| 59 | 1.3 | **Phase 2: 8th Semester Activities** |  | 89.56d | 2018-01-10 A | 2018-05-15 | 58 | 99% | 0d | 0d |
| 60 | 1.3.1 | **Coding and Unit Testing** |  | 70d | 2018-01-10 A | 2018-04-17 A |  | 100% |  |  |
| 61 | 1.3.1.1 | **Coding** |  | 30d | 2018-01-10 A | 2018-02-20 A |  | 100% |  |  |
| 62 | 1.3.1.1.1 | Boolean network modeling |  | 6d | 2018-01-10 A | 2018-01-17 A |  | 100% |  |  |
| 63 | 1.3.1.1.2 | Unique input vector identification |  | 6d | 2018-01-18 A | 2018-01-25 A | 62 | 100% |  |  |
| 64 | 1.3.1.1.3 | Fault introduction into Boolean network |  | 6d | 2018-01-26 A | 2018-02-02 A | 63 | 100% |  |  |
| 65 | 1.3.1.1.4 | Drug combination application |  | 6d | 2018-02-05 A | 2018-02-12 A | 64 | 100% |  |  |
| 66 | 1.3.1.1.5 | Custom drug application |  | 6d | 2018-02-13 A | 2018-02-20 A | 65 | 100% |  |  |
| 67 | 1.3.1.2 | **Unit Testing** |  | 40d | 2018-02-21 A | 2018-04-17 A | 61 | 100% |  |  |
| 68 | 1.3.1.2.1 | Boolean network modeling |  | 8d | 2018-02-21 A | 2018-03-02 A |  | 100% |  |  |
| 69 | 1.3.1.2.2 | Unique input vector identification |  | 8d | 2018-03-05 A | 2018-03-14 A | 68 | 100% |  |  |
| 70 | 1.3.1.2.3 | Fault introduction into Boolean network |  | 8d | 2018-03-15 A | 2018-03-26 A | 69 | 100% |  |  |
| 71 | 1.3.1.2.4 | Drug combinations application |  | 8d | 2018-03-27 A | 2018-04-05 A | 70 | 100% |  |  |
| 72 | 1.3.1.2.5 | Custom drug application |  | 8d | 2018-04-06 A | 2018-04-17 A | 71 | 100% |  |  |
| 73 | 1.3.2 | **Sysem Integration Testing** |  | 14d | 2018-04-18 A | 2018-05-07 A | 60 | 100% |  |  |
| 74 | 1.3.2.1 | **System Testing** |  | 14d | 2018-04-18 A | 2018-05-07 A |  | 100% |  |  |
| 75 | 1.3.2.1.1 | Indentification of optimum drug therpy for cancer using Boolean networks |  | 14d | 2018-04-18 A | 2018-05-07 A |  | 100% |  |  |

| ID | WBS | Task | Type | Duration | Start | Finish | Predecessors | Complete | Remaining | Total slack |
| --- | --- | --- | --- | --- | --- | --- | --- | --- | --- | --- |
| 76 | 1.3.3 | **Project Closure** |  | 5d | 2018-05-08 A | 2018-05-15 | 73 | 99% | 0d | 0d |
| 77 | 1.3.3.1 | Prepare 8th Semester Project Report |  | 3d | 2018-05-08 A | 2018-05-11 A |  | 100% |  |  |
| 78 | 1.3.3.2 | Updated Requirement Matrix |  | 1d | 2018-05-11 A | 2018-05-14 A | 77 | 100% |  |  |
| 79 | 1.3.3.3 | Updated Project Plan |  | 1d | 2018-05-14 A | 2018-05-15 A | 78 | 100% |  |  |
| 80 | 1.3.3.4 | Review by Faculties | milestone | 0d | 2018-05-15 | 2018-05-15 | 79 |  |  | 0d |
| 81 | 1.3.3.5 | Approved Project Report - 8th Semester | milestone | 0d | 2018-05-15 | 2018-05-15 | 80 |  |  | 0d |
